Task ID,Section,Description,Owner,Dependencies,Pre-requisites,Definition of Done,Status,KPIs,Target Sprint,Artifacts To Track,Validation Method,Estimate (O/M/P),Planned Start,Planned Finish,Percent Complete,Dependency Types,Cadence
EXC-INIT-001,AI Foundation,Sprint 0 - Environment Setup with Agent Ecosystem,Tech Lead (STOA-Foundation),,FILE:.specify/memory/Framework.md;FILE:audit-matrix.yml;POLICY:Budget approved;ENV:AI tools access;ENV:GitHub Enterprise;FILE:docs/architecture/adr/ADR-006-agent-tools.md;FILE:docs/shared/review-checklist.md;FILE:docs/operations/pr-checklist.md;FILE:docs/operations/project-playbook.md,"Complete AI-enhanced environment with automation pipelines operational; artifacts: setup-complete-checklist.md, automation-metrics.json, pipeline-status.yaml; targets: >=80%, zero errors; verified by: pnpm test",Completed,"Setup time <4 hours total, 80% tasks automated, zero manual configuration errors",0,ARTIFACT:docs/agent/setup-complete-checklist.md;ARTIFACT:artifacts/metrics/automation-metrics.json;ARTIFACT:infra/monitoring/pipeline-status.yaml;EVIDENCE:.specify/sprints/sprint-0/attestations/EXC-INIT-001/attestation.json,VALIDATE:pnpm test,120/240/480,2025-12-14,2025-12-14,100,,
AI-SETUP-001,AI Foundation,Configure Claude Code with Custom Commands and Hooks,AI Specialist (STOA-Intelligence),EXC-INIT-001,FILE:.specify/memory/Framework.md;FILE:audit-matrix.yml;ENV:Claude Code access;ENV:project repository created;FILE:docs/agent/setup-complete-checklist.md,".claude/commands configured, hooks system active, slash commands tested; targets: >=100%, <100ms",Completed,"100% commands functional, hooks triggering <100ms",0,ARTIFACT:artifacts/reports/command-test-results.csv;EVIDENCE:.specify/sprints/sprint-0/attestations/AI-SETUP-001/attestation.json;ARTIFACT:tools/integrations/codex/**;ARTIFACT:tools/integrations/jules/**,VALIDATE:pnpm test,60/120/240,2025-12-14,2025-12-15,100,EXC-INIT-001:FS,
AI-SETUP-002,AI Foundation,GitHub Copilot Enterprise Automation Setup,AI Specialist (STOA-Intelligence),AI-SETUP-001,FILE:.specify/memory/Framework.md;FILE:audit-matrix.yml;ENV:GitHub Enterprise;ENV:Copilot licenses;FILE:docs/architecture/adr/ADR-005-workflow-engine.md;FILE:docs/shared/review-checklist.md;FILE:docs/operations/pr-checklist.md;FILE:artifacts/reports/command-test-results.csv,"copilot-instructions.md created, copilot-setup-steps.yml automated, coding agent enabled; targets: >=100%, <2s",Completed,"Copilot response <2s, 100% team access, automation workflows active",0,ARTIFACT:docs/shared/copilot-instructions.md;ARTIFACT:docs/planning/team-licenses.csv;ARTIFACT:infra/monitoring/workflow-automation.yaml;EVIDENCE:.specify/sprints/sprint-0/attestations/AI-SETUP-002/attestation.json,VALIDATE:pnpm typecheck,60/120/240,2025-12-15,2025-12-16,100,AI-SETUP-001:FS,
AI-SETUP-003,AI Foundation,"External AI Tools Integration (Codex, Jules)",AI Specialist (STOA-Intelligence),AI-SETUP-001,FILE:.specify/memory/Framework.md;FILE:audit-matrix.yml;ENV:API keys configured;ENV:sandbox environments;FILE:docs/architecture/adr/ADR-006-agent-tools.md;FILE:artifacts/reports/command-test-results.csv,"Codex CLI configured, Jules connected, security sandboxing verified, automation triggers set; targets: <5s; verified by: pnpm test, pnpm test:integration; gates: security-scan-pass",Completed,"External tools integrated, sandboxing validated, <5s response time",0,ARTIFACT:infra/monitoring/sandbox-security.json;ARTIFACT:artifacts/metrics/response-metrics.csv;ARTIFACT:apps/ai-worker/**;EVIDENCE:.specify/sprints/sprint-0/attestations/AI-SETUP-003/attestation.json,VALIDATE:pnpm test;VALIDATE:pnpm test:integration;GATE:security-scan-pass,90/180/360,2025-12-15,2025-12-17,100,AI-SETUP-001:FS,
ENV-001-AI,Foundation Setup,Automated Monorepo Creation,Tech Lead + Claude Code (STOA-Automation),AI-SETUP-001,FILE:.specify/memory/Framework.md;FILE:audit-matrix.yml;ENV:Claude Code ready;ENV:automation commands configured;FILE:docs/architecture/repo-layout.md;FILE:artifacts/reports/command-test-results.csv,"Monorepo generated via Claude slash command, structure validated, AI-optimized configuration; targets: >=100%, <10 min, zero errors; verified by: pnpm build",Completed,"Setup <10 minutes, zero manual steps, 100% best practices applied",0,ARTIFACT:turbo.json;ARTIFACT:pnpm-workspace.yaml;ARTIFACT:apps/ai-worker/package.json;ARTIFACT:apps/ai-worker/tsconfig.json;ARTIFACT:vitest.config.ts;ARTIFACT:apps/ai-worker/.env.example;ARTIFACT:eslint.config.mjs;ARTIFACT:apps/ai-worker/.gitignore;ARTIFACT:apps/api/package.json;ARTIFACT:apps/api/src/index.ts;ARTIFACT:apps/api/src/context.ts;ARTIFACT:packages/domain/package.json;ARTIFACT:packages/domain/tsconfig.json;ARTIFACT:packages/application/package.json;ARTIFACT:packages/application/tsconfig.json;ARTIFACT:packages/adapters/package.json;ARTIFACT:packages/adapters/tsconfig.json;ARTIFACT:packages/validators/package.json;ARTIFACT:packages/validators/tsconfig.json;ARTIFACT:packages/db/package.json;ARTIFACT:packages/db/tsconfig.json;ARTIFACT:packages/ui/package.json;ARTIFACT:packages/ui/tsconfig.json;ARTIFACT:packages/api-client/package.json;ARTIFACT:packages/api-client/tsconfig.json;ARTIFACT:packages/typescript-config/package.json;ARTIFACT:packages/typescript-config/base.json;ARTIFACT:packages/typescript-config/nextjs.json;ARTIFACT:packages/typescript-config/react.json;ARTIFACT:packages/typescript-config/react-library.json;EVIDENCE:.specify/sprints/sprint-0/attestations/ENV-001-AI/attestation.json,VALIDATE:pnpm build,60/120/240,2025-12-15,2025-12-16,100,AI-SETUP-001:FS,
ENV-002-AI,Foundation Setup,Automated Development Tools Configuration,Backend Dev + AI Specialist (STOA-Intelligence),ENV-001-AI,FILE:.specify/memory/Framework.md;FILE:audit-matrix.yml;ENV:Monorepo ready;ENV:Copilot automation active;FILE:docs/architecture/adr/ADR-006-agent-tools.md;FILE:docs/operations/engineering-playbook.md;FILE:turbo.json,"ESLint/Prettier AI-configured, Husky hooks with AI validation, conventional commits automated; targets: <5 min, zero errors; verified by: pnpm lint",Completed,"Configuration time <5 minutes, AI-suggested rules applied, zero conflicts",0,ARTIFACT:eslint.config.mjs;ARTIFACT:.prettierrc;ARTIFACT:tools/scripts/commitlint.config.js;ARTIFACT:artifacts/reports/lint-results.json;ARTIFACT:artifacts/reports/env-validation-results.json;ARTIFACT:tests/mocks/**;ARTIFACT:tests/unit/**;EVIDENCE:.specify/sprints/sprint-0/attestations/ENV-002-AI/attestation.json;ARTIFACT:packages/ai/tsconfig.json;ARTIFACT:packages/search/tsconfig.json;ARTIFACT:tests/utils/test-helpers.ts;ARTIFACT:artifacts/reports/code-analysis/knip-report-latest.json;ARTIFACT:tests/**,VALIDATE:pnpm lint,30/60/120,2025-12-16,2025-12-16,100,ENV-001-AI:FS,
ENV-003-AI,Foundation Setup,Docker Environment with Optimized Configuration,DevOps + Claude Code (STOA-Automation),ENV-001-AI,FILE:.specify/memory/Framework.md;FILE:audit-matrix.yml;ENV:Docker Desktop;ENV:Claude Code hooks active;FILE:turbo.json,"Docker Compose AI-generated, resource optimization applied, auto-scaling configured; targets: <2 min",Completed,"Environment up <2 minutes, AI-optimized resource usage, self-healing enabled",0,ARTIFACT:docker-compose.yml;ARTIFACT:infra/monitoring/health-check.yaml;EVIDENCE:.specify/sprints/sprint-0/attestations/ENV-003-AI/attestation.json;ARTIFACT:apps/workers/events-worker/Dockerfile;ARTIFACT:apps/workers/ingestion-worker/Dockerfile;ARTIFACT:apps/workers/notifications-worker/Dockerfile;ARTIFACT:docs/setup/docker-compose-overlays.md,VALIDATE:pnpm typecheck,45/90/180,2025-12-16,2025-12-17,100,ENV-001-AI:FS,
ENV-004-AI,Foundation Setup,Supabase Integration with Automated Schema Design,Backend Dev + AI Agents (STOA-Intelligence),ENV-003-AI,FILE:.specify/memory/Framework.md;FILE:audit-matrix.yml;ENV:Supabase account;ENV:AI schema generation ready;FILE:docs/architecture/adr/ADR-001-modern-stack.md;FILE:packages/db/prisma/schema.prisma;FILE:docs/design/token-mapping.md;FILE:docs/company/brand/visual-identity.md;FILE:docker-compose.yml,"Connection established, pgvector optimized by AI, schema AI-validated for performance; targets: >=100%, <30ms",Completed,"Connection <30ms, AI-optimized indexes, 100% type safety verified",0,ARTIFACT:infra/supabase/config.toml;ARTIFACT:packages/db/prisma/migrations/**;ARTIFACT:packages/db/scripts/**;EVIDENCE:.specify/sprints/sprint-0/attestations/ENV-004-AI/attestation.json;ARTIFACT:packages/db/.env.example;ARTIFACT:scripts/reset-test-db.ps1;ARTIFACT:scripts/reset-test-db.sh,VALIDATE:pnpm typecheck,60/120/240,2025-12-17,2025-12-18,100,ENV-003-AI:FS,
ENV-005-AI,Foundation Setup,CI/CD Pipeline with Predictive Optimization,DevOps + Claude Code (STOA-Automation),ENV-002-AI,FILE:.specify/memory/Framework.md;FILE:audit-matrix.yml;ENV:GitHub Actions;ENV:AI automation hooks;FILE:docs/shared/review-checklist.md;FILE:docs/operations/quality-gates.md;FILE:docs/operations/pr-checklist.md;FILE:eslint.config.mjs,"Pipeline AI-generated, predictive caching, self-optimizing workflows, security gates automated; artifacts: ci.yml, cd.yml, context_ack.json; targets: >=95%, <5 min",Completed,"Pipeline <5 minutes, 95% cache hit rate, AI-predicted optimization applied",0,ARTIFACT:.github/workflows/ci.yml;ARTIFACT:.github/workflows/cd.yml;ARTIFACT:artifacts/reports/env-validation-results.json;EVIDENCE:.specify/sprints/sprint-0/attestations/ENV-005-AI/attestation.json,AUDIT:security-review;VALIDATE:pnpm typecheck,60/120/240,2025-12-16,2025-12-17,100,ENV-002-AI:FS,
ENV-006-AI,Foundation Setup,Prisma Schema with Generated Optimizations,Backend Dev + Copilot (STOA-Automation),ENV-004-AI,FILE:.specify/memory/Framework.md;FILE:audit-matrix.yml;ENV:Database ready;POLICY:AI schema analysis complete;FILE:packages/db/prisma/schema.prisma;FILE:docs/shared/review-checklist.md;FILE:docs/operations/pr-checklist.md;FILE:infra/supabase/config.toml,"Schema AI-optimized, migrations AI-tested, seed data AI-generated, performance validated; targets: >=100%, <15s",Completed,"Migration time <15s, AI-verified indexes, 100% query optimization",0,ARTIFACT:packages/db/**;EVIDENCE:.specify/sprints/sprint-0/attestations/ENV-006-AI/attestation.json,VALIDATE:pnpm test,60/120/240,2025-12-18,2025-12-19,100,ENV-004-AI:FS,
ENV-007-AI,Foundation Setup,tRPC Setup with Automated Type Generation,Tech Lead + Claude Code (STOA-Automation),ENV-006-AI,FILE:.specify/memory/Framework.md;FILE:audit-matrix.yml;ENV:Prisma ready;ENV:AI type generation active;FILE:docs/architecture/adr/ADR-001-modern-stack.md;FILE:packages/db/prisma/schema.prisma,"tRPC AI-configured, routers auto-generated, type safety AI-verified, error handling automated; targets: <30s, zero errors",Completed,"Type generation <30s, zero type errors, AI-validated contracts",0,ARTIFACT:apps/api/src/router.ts;ARTIFACT:apps/web/src/lib/trpc.ts;EVIDENCE:.specify/sprints/sprint-0/attestations/ENV-007-AI/attestation.json,VALIDATE:pnpm typecheck,45/90/180,2025-12-19,2025-12-20,100,ENV-006-AI:FS,
ENV-008-AI,Foundation Setup,Automated Observability with Predictive Monitoring,Backend Dev + AI Specialist (STOA-Intelligence),ENV-005-AI,FILE:.specify/memory/Framework.md;FILE:audit-matrix.yml;POLICY:Monitoring tools selected;ENV:AI analysis ready;FILE:docs/shared/review-checklist.md;FILE:docs/operations/pr-checklist.md;FILE:.github/workflows/ci.yml,"OpenTelemetry AI-configured, predictive alerts set, anomaly detection active, self-healing enabled; targets: >=100%",In Progress,100% services emit traces/metrics/logs; alerting configured; SLOs defined; dashboards live,0,ARTIFACT:infra/monitoring/otel-config.yaml;ARTIFACT:infra/monitoring/anomaly-detection.json;ARTIFACT:infra/monitoring/self-healing-rules.yaml;ARTIFACT:docs/architecture/observability/correlation-patterns.md;ARTIFACT:docs/architecture/observability/implementation-guide.md;ARTIFACT:docs/architecture/observability/instrumentation-checklist.md;EVIDENCE:.specify/sprints/sprint-0/attestations/ENV-008-AI/attestation.json,VALIDATE:pnpm typecheck,90/180/360,2025-12-17,2025-12-19,50,ENV-005-AI:FS,
ENV-009-AI,Foundation Setup,Frontend with Generated Components and Optimization,Frontend Dev + Claude Code (STOA-Automation),ENV-001-AI,FILE:.specify/memory/Framework.md;FILE:audit-matrix.yml;ENV:Design system;ENV:AI component generation;FILE:docs/company/brand/visual-identity.md;FILE:turbo.json,"Next.js 16.0.10 App Router baseline, Turbopack FS caching enabled, Cache Components used where appropriate, proxy replaces middleware where required; shadcn components AI-selected, performance AI-tuned, accessibility verified; targets: <1s; gates: lighthouse-gte-90",Completed,"Lighthouse >95, AI-generated components, load time <1s",0,EVIDENCE:.specify/sprints/sprint-0/attestations/ENV-009-AI/attestation.json;ARTIFACT:docs/setup/sonarqube-setup.md,GATE:lighthouse-gte-90,60/120/240,2025-12-16,2025-12-18,100,ENV-001-AI:FS,
ENV-010-AI,Foundation Setup,Automated Test Generation and Automation,QA Lead + AI Testing Suite (STOA-Quality),"ENV-007-AI,ENV-009-AI",FILE:.specify/memory/Framework.md;FILE:audit-matrix.yml;ENV:AI test generation tools;ENV:coverage targets;FILE:docs/architecture/adr/ADR-005-workflow-engine.md;FILE:docs/development/tdd-guidelines.md;FILE:apps/api/src/router.ts,"Tests AI-generated, coverage AI-optimized, E2E scenarios AI-created, continuous validation; artifacts: index.html, context_ack.json; targets: >=90%, <1 min; gates: coverage-gte-90",Completed,"Coverage >90%, test generation <1 minute, AI-verified scenarios",0,ARTIFACT:vitest.config.ts;EVIDENCE:.specify/sprints/sprint-0/attestations/ENV-010-AI/attestation.json,VALIDATE:pnpm test;GATE:coverage-gte-90,60/120/240,2025-12-20,2025-12-21,100,"ENV-007-AI:FS,ENV-009-AI:FS",
ENV-011-AI,Foundation Setup,LangChain Integration with Optimized Chains,AI Specialist + Claude Code (STOA-Intelligence),ENV-007-AI,FILE:.specify/memory/Framework.md;FILE:audit-matrix.yml;ENV:OpenAI access;ENV:AI chain optimization;FILE:apps/api/src/router.ts,"LangChain AI-configured, chains AI-optimized, rate limiting AI-managed, cost prediction active",Completed,Workflow runtime P95 < 300ms per step (baseline); cost logging enabled; deterministic replays supported,0,EVIDENCE:.specify/sprints/sprint-0/attestations/ENV-011-AI/attestation.json,VALIDATE:pnpm typecheck,90/180/360,2025-12-20,2025-12-22,100,ENV-007-AI:FS,
ENV-012-AI,Foundation Setup,Documentation with Auto-Generation,Tech Writer + AI Agents (STOA-Intelligence),ENV-001-AI,FILE:.specify/memory/Framework.md;FILE:audit-matrix.yml;ENV:Docusaurus setup;ENV:AI content generation;FILE:turbo.json,"Docs AI-generated, LLM-optimized structure, auto-updating enabled, multi-language support; artifacts: docusaurus.config.js, context_ack.json; targets: >=100%, <30s; gates: coverage-gte-90",Completed,"Doc generation <30s, 100% coverage, AI readability score >90",0,ARTIFACT:docs/docusaurus.config.js;ARTIFACT:tools/scripts/docusaurus.config.js;EVIDENCE:.specify/sprints/sprint-0/attestations/ENV-012-AI/attestation.json,GATE:coverage-gte-90,45/90/180,2025-12-16,2025-12-17,100,ENV-001-AI:FS,
ENV-013-AI,Foundation Setup,Automated Security Implementation,Security Eng + AI Security Tools (STOA-Security),"ENV-005-AI,ENV-007-AI,ENV-009-AI",FILE:.specify/memory/Framework.md;FILE:audit-matrix.yml;ENV:Security AI tools;ENV:threat models;FILE:docs/security/zero-trust-design.md;FILE:docs/operations/engineering-playbook.md;FILE:.github/workflows/ci.yml;FILE:apps/api/src/router.ts,"Security AI-audited, vulnerabilities AI-detected, patches AI-applied, compliance verified; artifacts: security-scan-results.json, compliance-report.md, patch-log.csv; targets: >=100%, zero errors",Completed,"Zero high vulnerabilities, AI security score A+, compliance 100%",0,ARTIFACT:artifacts/reports/security-scan-results.json;ARTIFACT:docs/compliance-and-governance/compliance/compliance-report.md;ARTIFACT:infra/monitoring/security-baseline.json;ARTIFACT:artifacts/reports/security/audit-latest.json;EVIDENCE:.specify/sprints/sprint-0/attestations/ENV-013-AI/attestation.json;ARTIFACT:docs/architecture/adr/ADR-015-security-validation.md,AUDIT:security-review;VALIDATE:pnpm typecheck,120/240/480,2025-12-20,2025-12-23,100,"ENV-005-AI:FS,ENV-007-AI:FS,ENV-009-AI:FS",
ENV-014-AI,Foundation Setup,Performance Optimization with AI Profiling,Performance Eng + AI Tools (STOA-Quality),ENV-009-AI,FILE:.specify/memory/Framework.md;FILE:audit-matrix.yml;ENV:Performance AI tools;POLICY:metrics defined;FILE:docs/shared/review-checklist.md;FILE:docs/operations/pr-checklist.md,"Performance AI-profiled, optimizations AI-applied, predictive scaling configured; targets: >=40%",Completed,"Performance gain >40%, AI-optimized bundles, predictive caching active",0,ARTIFACT:artifacts/reports/profiling-results.json;ARTIFACT:infra/monitoring/cache-config.yaml;ARTIFACT:infra/monitoring/security-baseline.json;EVIDENCE:.specify/sprints/sprint-0/attestations/ENV-014-AI/attestation.json,VALIDATE:pnpm typecheck,60/120/240,2025-12-18,2025-12-20,100,ENV-009-AI:FS,
ENV-015-AI,Foundation Setup,AI-Managed Feature Flags with Predictive Rollout,Backend Dev + AI Agents (STOA-Intelligence),ENV-007-AI,FILE:.specify/memory/Framework.md;FILE:audit-matrix.yml;ENV:Feature flag system;ENV:AI rollout engine;FILE:docs/shared/review-checklist.md;FILE:docs/operations/pr-checklist.md;FILE:apps/api/src/router.ts,"Flags AI-managed, rollout AI-optimized, A/B tests AI-designed, results AI-analyzed; artifacts: rollout-config.json, ab-test-results.csv, prediction-accuracy.json; targets: >=90%, <30s",Completed,"Flag deployment <30s, AI-optimized rollout, prediction accuracy >90%",0,ARTIFACT:infra/monitoring/rollout-config.json;ARTIFACT:artifacts/reports/ab-test-results.csv;ARTIFACT:artifacts/metrics/prediction-accuracy.json;EVIDENCE:.specify/sprints/sprint-0/attestations/ENV-015-AI/attestation.json,VALIDATE:pnpm test,60/120/240,2025-12-20,2025-12-22,100,ENV-007-AI:FS,
ENV-016-AI,Foundation Setup,Privacy-First Analytics with AI Insights,Frontend Dev + AI Analytics (STOA-Intelligence),"ENV-009-AI,ANALYTICS-001",FILE:.specify/memory/Framework.md;FILE:audit-matrix.yml;POLICY:Analytics strategy;ENV:AI insight engine;FILE:docs/shared/review-checklist.md;FILE:docs/operations/pr-checklist.md;FILE:docs/analytics/rfm-abc-spec.md,"Analytics AI-configured, insights AI-generated, privacy AI-verified, predictions active",Completed,Feature flag framework live; audit log events captured; privacy baseline reviewed (DPIA draft),0,ARTIFACT:infra/monitoring/privacy-config.json;ARTIFACT:artifacts/metrics/insights-accuracy.csv;ARTIFACT:docs/compliance-and-governance/compliance/gdpr-compliance.md;ARTIFACT:docs/api/schemas/analytics-event-schema.json;ARTIFACT:docs/analytics/analytics-README.md;EVIDENCE:.specify/sprints/sprint-0/attestations/ENV-016-AI/attestation.json,VALIDATE:pnpm typecheck,60/120/240,2025-12-22,2025-12-24,100,"ENV-009-AI:FS,ANALYTICS-001:FS",
ENV-017-AI,Foundation Setup,Automated Integration Testing,All Teams + AI Orchestrator (STOA-Intelligence),"ENV-001-AI,ENV-003-AI,ENV-005-AI,ENV-010-AI,IFC-001",FILE:.specify/memory/Framework.md;FILE:audit-matrix.yml;ENV:All components ready;ENV:AI orchestration active;FILE:docs/development/tdd-guidelines.md;FILE:turbo.json;FILE:docker-compose.yml;FILE:.github/workflows/ci.yml;FILE:docs/architecture/adr/ADR-001-modern-stack.md,"System AI-tested, issues AI-detected and fixed, demo AI-prepared, metrics AI-verified; artifacts: test-orchestration.json, bug-fixes.log, confidence-metrics.csv; targets: zero errors",Completed,Smoke + integration suite green; zero P0/P1 defects; test execution time <= 15 min in CI,1,ARTIFACT:infra/monitoring/test-orchestration.json;ARTIFACT:artifacts/metrics/confidence-metrics.csv;EVIDENCE:.specify/sprints/sprint-1/attestations/ENV-017-AI/attestation.json,VALIDATE:pnpm test,90/180/360,2025-12-28,2026-01-02,100,"ENV-001-AI:FS,ENV-003-AI:FS,ENV-005-AI:FS,ENV-010-AI:FS,IFC-001:FS",
ENV-018-AI,Foundation Setup,Sprint Planning and Velocity Prediction,PM + AI Planning Tools (STOA-Intelligence),ENV-017-AI,FILE:.specify/memory/Framework.md;FILE:audit-matrix.yml;POLICY:Sprint 0 complete;ENV:AI analytics ready;FILE:docs/shared/review-checklist.md;FILE:docs/operations/quality-gates.md;FILE:docs/operations/pr-checklist.md;FILE:docs/operations/project-playbook.md;FILE:infra/monitoring/test-orchestration.json,"Backlog AI-prioritized, velocity AI-predicted, capacity AI-optimized, risks AI-identified; artifacts: velocity-prediction.json, capacity-model.csv, risk-matrix.md; targets: >=20%",Completed,"Delivery metrics dashboard live (lead time, deploy frequency, change failure rate, MTTR); forecast error <= +/-20%",1,ARTIFACT:packages/test-fixtures/velocity-prediction.json;ARTIFACT:docs/planning/capacity-model.csv;ARTIFACT:docs/compliance-and-governance/governance/risk-matrix.md;ARTIFACT:docs/planning/sprint-planning-README.md;EVIDENCE:.specify/sprints/sprint-1/attestations/ENV-018-AI/attestation.json,VALIDATE:pnpm typecheck,60/120/240,2026-01-02,2026-01-05,100,ENV-017-AI:FS,
EP-001-AI,Foundation Setup,EasyPanel Internal Tools Deployment (Push-based OTLP Pipeline),DevOps + Claude Code (STOA-Automation),"ENV-003-AI,ENV-008-AI",FILE:.specify/memory/Framework.md;FILE:audit-matrix.yml;ENV:Server provisioned;ENV:Tailscale or Cloudflare Access configured;ENV:EasyPanel installed;FILE:docs/architecture/adr/ADR-006-agent-tools.md;FILE:docs/operations/quality-gates.md;FILE:docs/operations/release-rollback.md;FILE:docker-compose.yml;FILE:infra/monitoring/otel-config.yaml,"Week 1: OTel Collector + Prometheus + Grafana deployed behind access control; Week 2: Loki + Tempo deployed with trace-to-log correlation; Week 3: SonarQube deployed with GitHub Actions integration; All configs git-versioned and shared between local Docker and EasyPanel; targets: >=100%, <30 min, zero errors",In Progress,"Setup <30 min, zero manual SSL config, 100% services behind access control, 30-day metrics/logs retention, 7-day traces retention, OTLP push working from Railway",0,ARTIFACT:infra/monitoring/otel-collector.yaml;ARTIFACT:infra/monitoring/tempo-config.yml;ARTIFACT:infra/monitoring/docker-compose.monitoring.yml;ARTIFACT:infra/monitoring/prometheus.yml;ARTIFACT:infra/monitoring/loki-config.yml;ARTIFACT:artifacts/monitoring-config-hashes.txt;ARTIFACT:docs/operations/runbooks/monitoring-runbook.md;EVIDENCE:.specify/sprints/sprint-0/attestations/EP-001-AI/attestation.json;ARTIFACT:docs/operations/runbooks/easypanel-runbook.md,VALIDATE:pnpm typecheck,180/360/720,2025-12-19,2025-12-26,50,"ENV-003-AI:FS,ENV-008-AI:FS",
AUTOMATION-001,AI Foundation,Continuous AI Agent Coordination System,AI Specialist (STOA-Intelligence),"AI-SETUP-001,AI-SETUP-002,ENV-005-AI,ENV-008-AI,ENV-010-AI",FILE:.specify/memory/Framework.md;FILE:audit-matrix.yml;ENV:All AI tools integrated;FILE:docs/architecture/adr/ADR-006-agent-tools.md;FILE:artifacts/reports/command-test-results.csv;FILE:docs/shared/copilot-instructions.md;FILE:.github/workflows/ci.yml;FILE:infra/monitoring/otel-config.yaml,"Multi-agent orchestration active, task handoffs automated, quality gates AI-enforced; artifacts: orchestration-config.yaml, handoff-metrics.json, quality-gates.log",Completed,Automated task routing/notifications in place; PR/CI status surfaced; incident alerts to on-call channel,0,ARTIFACT:infra/monitoring/orchestration-config.yaml;ARTIFACT:artifacts/metrics/handoff-metrics.json;ARTIFACT:infra/monitoring/quality-gate-config.json;ARTIFACT:scripts/swarm/orchestrator.sh;ARTIFACT:scripts/swarm/swarm-manager.sh;ARTIFACT:docs/architecture/agent-coordination-README.md;ARTIFACT:infra/agent-routing-rules.json;ARTIFACT:tools/scripts/verify-dod.ts;ARTIFACT:tools/scripts/lib/stoa/**;ARTIFACT:tools/scripts/lib/sprint-audit/**;ARTIFACT:tools/scripts/lib/workflow/**;ARTIFACT:tools/scripts/lib/schemas/**;ARTIFACT:tools/scripts/lib/sprint/types.ts;ARTIFACT:tools/scripts/lib/contract-parser.ts;ARTIFACT:scripts/debt-analyzer.js;ARTIFACT:scripts/sonarqube-metrics.js;ARTIFACT:scripts/prioritize-reviews.js;EVIDENCE:.specify/sprints/sprint-0/attestations/AUTOMATION-001/attestation.json;ARTIFACT:tools/**;ARTIFACT:scripts/**;ARTIFACT:tools/audit/policies/QUICK-REFERENCE.md;ARTIFACT:tools/scripts/attest-sprint.ts;ARTIFACT:tools/scripts/detect-phantom-completions.ts;ARTIFACT:tools/scripts/quality-report.ts;ARTIFACT:tools/plan-linter/package.json;ARTIFACT:tools/scripts/lib/stoa/waiver.ts;ARTIFACT:tools/scripts/lib/context-ack-gatekeeper.test.ts;ARTIFACT:tools/scripts/lib/context-pack-builder.test.ts;ARTIFACT:tools/scripts/lib/validation-utils.test.ts;ARTIFACT:docs/planning/plan-change-log.md;ARTIFACT:docs/planning/plan-governance.md,GATE:coverage-gte-90,120/240/480,2025-12-21,2025-12-25,100,"AI-SETUP-001:FS,AI-SETUP-002:FS,ENV-005-AI:FS,ENV-008-AI:FS,ENV-010-AI:FS",
AUTOMATION-002,AI Foundation,AI Performance Dashboard and Optimization Loop,AI Specialist + Backend Dev (STOA-Intelligence),AUTOMATION-001,FILE:.specify/memory/Framework.md;FILE:audit-matrix.yml;ENV:Metrics collection active;ENV:AI analysis ready;FILE:infra/monitoring/orchestration-config.yaml,"Dashboard showing AI impact, optimization suggestions implemented, ROI tracked; artifacts: optimization-loop.yaml, roi-tracking.csv, metrics-realtime.json",Completed,DORA + quality metrics dashboard live; weekly review cadence established; action items tracked to closure,0,ARTIFACT:infra/monitoring/optimization-loop.yaml;ARTIFACT:artifacts/reports/roi-tracking.csv;ARTIFACT:artifacts/metrics/metrics-realtime.json;ARTIFACT:infra/monitoring/dashboard-spec.json;ARTIFACT:docs/architecture/ai-dashboard-README.md;ARTIFACT:docs/architecture/agent-coordination-README.md;ARTIFACT:infra/agent-routing-rules.json;EVIDENCE:.specify/sprints/sprint-0/attestations/AUTOMATION-002/attestation.json,VALIDATE:pnpm typecheck,90/180/360,2025-12-25,2025-12-27,100,AUTOMATION-001:FS,
IFC-000,Planning,IntelliFlow CRM Feasibility Assessment,CEO + CTO + CFO (STOA-Leadership),,FILE:.specify/memory/Framework.md;FILE:audit-matrix.yml;POLICY:Leadership alignment complete;POLICY:vision approved,Go/No-Go decision documented with clear rationale; targets: >=80%,Completed,"Decision confidence >80%, risks documented",0,ARTIFACT:docs/planning/financial/business-case.md;ARTIFACT:docs/planning/swot-analysis.md;ARTIFACT:docs/planning/financial/financial-model.md;ARTIFACT:docs/architecture/adr/ADR-000-feasibility.md;EVIDENCE:.specify/sprints/sprint-0/attestations/IFC-000/attestation.json,AUDIT:code-review,60/120/240,2025-12-14,2025-12-14,100,,
IFC-001,Validation,PHASE-001: Technical Architecture Spike - Modern Stack,CTO + Tech Lead (STOA-Foundation),IFC-000,FILE:.specify/memory/Framework.md;FILE:audit-matrix.yml;ENV:Turborepo setup;POLICY:tRPC evaluated;ENV:Supabase account;FILE:docs/architecture/adr/ADR-001-modern-stack.md;FILE:docs/development/tdd-guidelines.md;FILE:docs/shared/review-checklist.md;FILE:docs/architecture/decision-workflow.md;FILE:docs/planning/financial/business-case.md,"Modern stack feasibility proven, ADRs documented; targets: <50ms",Completed,"All components connectable, type-safety validated, latency <50ms",1,ARTIFACT:.specify/sprints/sprint-1/context/IFC-001/hydrated-context.md;SPEC:.specify/sprints/sprint-1/specifications/IFC-001-spec.md;PLAN:.specify/sprints/sprint-1/planning/IFC-001-plan.md;ARTIFACT:docs/architecture/architecture-spike-README.md;ARTIFACT:tools/scripts/benchmarks/performance-test.ts;ARTIFACT:tools/scripts/benchmarks/type-safety-validation.ts;EVIDENCE:.specify/sprints/sprint-1/attestations/IFC-001/context_pack.md;EVIDENCE:.specify/sprints/sprint-1/attestations/IFC-001/attestation.json;ARTIFACT:docs/architecture/adr/ADR-001-modern-stack.md;ARTIFACT:docs/architecture/adr/ADR-001-modern-stack.md;ARTIFACT:artifacts/benchmarks/performance-benchmark.json;ARTIFACT:apps/project-tracker/docs/metrics/_global/flows/FLOW-001.md;ARTIFACT:apps/project-tracker/docs/metrics/_global/phase-validations/PHASE-001-validation.md;ARTIFACT:apps/web/src/**;ARTIFACT:apps/web/lib/**,VALIDATE:pnpm typecheck,120/240/480,2025-12-28,2026-01-02,100,IFC-000:FS,
IFC-002,Validation,PHASE-001: Domain Model Design (DDD),Tech Lead + DA (STOA-Foundation),IFC-000,FILE:.specify/memory/Framework.md;FILE:audit-matrix.yml;ENV:Prisma installed;POLICY:bounded contexts identified;FILE:docs/architecture/hex-boundaries.md;FILE:docs/planning/DDD-context-map.puml;FILE:packages/db/prisma/schema.prisma;FILE:docs/development/tdd-guidelines.md;FILE:docs/shared/review-checklist.md;FILE:docs/design/token-mapping.md;FILE:docs/company/brand/visual-identity.md;FILE:docs/planning/financial/business-case.md,"DDD model complete, Prisma schema created, Zod validators defined",Completed,"Schema supports all contexts, type-safe models",1,ARTIFACT:packages/db/prisma/schema.prisma;ARTIFACT:docs/planning/DDD-context-map.puml;ARTIFACT:apps/project-tracker/docs/metrics/_global/flows/FLOW-001.md;ARTIFACT:apps/project-tracker/docs/metrics/_global/phase-validations/PHASE-001-validation.md;EVIDENCE:.specify/sprints/sprint-1/attestations/IFC-002/attestation.json,VALIDATE:pnpm typecheck,120/240/480,2025-12-28,2026-01-03,100,IFC-000:FS,
IFC-003,Validation,PHASE-001: tRPC API Foundation,DevOps + Backend Dev (STOA-Automation),IFC-002,FILE:.specify/memory/Framework.md;FILE:audit-matrix.yml;ENV:Node.js 20;ENV:TypeScript strict mode;FILE:docs/architecture/adr/ADR-001-modern-stack.md;FILE:docs/development/tdd-guidelines.md;FILE:docs/shared/review-checklist.md;FILE:packages/db/prisma/schema.prisma,"tRPC router setup, type-safe endpoints, real-time subscriptions tested; targets: <50ms; output: trpc.ts, router.ts validated",Completed,"End-to-end type safety, <50ms response",1,ARTIFACT:apps/api/src/trpc.ts;ARTIFACT:apps/api/src/shared/e2e-type-safety-test.ts;ARTIFACT:apps/api/src/shared/subscription-demo.ts;ARTIFACT:apps/api/README.md;ARTIFACT:apps/project-tracker/docs/metrics/_global/flows/FLOW-001.md;ARTIFACT:apps/project-tracker/docs/metrics/_global/phase-validations/PHASE-001-validation.md;EVIDENCE:.specify/sprints/sprint-1/attestations/IFC-003/attestation.json,VALIDATE:pnpm test,90/180/360,2026-01-03,2026-01-07,100,IFC-002:FS,
IFC-004,Validation,PHASE-002: Next.js 16.0.10 Lead Capture UI,Frontend Dev + UX (STOA-Domain),IFC-003,"FILE:.specify/memory/Framework.md;FILE:audit-matrix.yml;ENV:Next.js 16.0.10 setup;ENV:shadcn/ui configured;FILE:docs/architecture/adr/ADR-001-modern-stack.md;FILE:docs/development/tdd-guidelines.md;FILE:docs/shared/review-checklist.md;FILE:docs/company/brand/visual-identity.md;FILE:apps/api/src/trpc.ts;IMPLEMENTS:FLOW-002,FLOW-003","Lead form with tRPC integration, mobile responsive; Next.js 16.0.10 App Router uses Turbopack FS caching and Cache Components; proxy replaces middleware where required; targets: <1s; verified by: pnpm test; gates: lighthouse-gte-90",Completed,"Lighthouse score >90, form submission <1s",2,ARTIFACT:apps/web/src/app/leads/(list)/new/page.tsx;ARTIFACT:artifacts/lighthouse/lighthouse-report.json;ARTIFACT:apps/project-tracker/docs/metrics/_global/flows/FLOW-002.md;ARTIFACT:apps/project-tracker/docs/metrics/_global/flows/FLOW-003.md;EVIDENCE:.specify/sprints/sprint-2/attestations/IFC-004/attestation.json;ARTIFACT:apps/api/src/**,VALIDATE:pnpm test;GATE:lighthouse-gte-90,90/180/360,2026-01-11,2026-01-15,100,IFC-003:FS,
IFC-005,Validation,"FLOW-002, FLOW-011: LangChain AI Scoring Prototype",AI Specialist + Backend Dev (STOA-Intelligence),IFC-004,FILE:.specify/memory/Framework.md;FILE:audit-matrix.yml;ENV:LangChain setup;ENV:OpenAI API key;ENV:Zod schemas;FILE:docs/development/tdd-guidelines.md;FILE:docs/shared/review-checklist.md;FILE:docs/operations/pr-checklist.md;FILE:apps/web/src/app/leads/(list)/new/page.tsx,"AI scoring pipeline with structured output, confidence scores; targets: <2s; output: scoring.chain.ts, output-schema.zod.ts validated",Completed,"Scoring <2s, structured output validated",2,ARTIFACT:apps/ai-worker/src/chains/scoring.chain.ts;ARTIFACT:apps/ai-worker/src/chains/scoring.chain.test.ts;ARTIFACT:apps/ai-worker/src/config/ai.config.ts;ARTIFACT:apps/ai-worker/src/prompts/index.ts;ARTIFACT:apps/ai-worker/src/prompts/scoring-system.txt;ARTIFACT:apps/ai-worker/src/prompts/scoring-user.txt;ARTIFACT:apps/ai-worker/src/types/index.ts;ARTIFACT:apps/ai-worker/src/utils/cost-tracker.ts;ARTIFACT:apps/ai-worker/src/utils/cost-tracker.test.ts;ARTIFACT:apps/ai-worker/src/utils/logger.ts;ARTIFACT:apps/ai-worker/src/utils/logger.test.ts;ARTIFACT:apps/ai-worker/src/utils/retry.ts;ARTIFACT:apps/ai-worker/src/utils/retry.test.ts;ARTIFACT:apps/ai-worker/src/index.ts;ARTIFACT:apps/ai-worker/src/examples/usage.ts;ARTIFACT:apps/api/src/shared/scoring-output-schema.zod.ts;ARTIFACT:apps/project-tracker/docs/metrics/_global/flows/FLOW-002.md;ARTIFACT:apps/project-tracker/docs/metrics/_global/phase-validations/PHASE-002-validation.md;EVIDENCE:.specify/sprints/sprint-2/attestations/IFC-005/attestation.json,VALIDATE:pnpm --filter @intelliflow/api typecheck;VALIDATE:pnpm --filter @intelliflow/api test --run,120/240/480,2026-01-15,2026-01-20,100,IFC-004:FS,
IFC-006,Validation,PHASE-002: Supabase Integration Test,Backend Dev + DevOps (STOA-Automation),IFC-003,FILE:.specify/memory/Framework.md;FILE:audit-matrix.yml;ENV:Supabase project created;ENV:auth configured;FILE:docs/architecture/adr/ADR-001-modern-stack.md;FILE:docs/development/tdd-guidelines.md;FILE:docs/shared/review-checklist.md;FILE:apps/api/src/trpc.ts;IMPLEMENTS:FLOW-001,"Auth working, real-time subscriptions, pgvector enabled; artifacts: supabase.ts, auth-flow-test.e2e.ts, vector-search-demo.ts; verified by: pnpm test",Completed,"Auth flow complete, vector search working",3,ARTIFACT:apps/api/src/lib/supabase.ts;ARTIFACT:apps/api/src/shared/auth-flow.test.ts;ARTIFACT:apps/api/src/shared/vector-search.test.ts;ARTIFACT:apps/web/proxy.ts;ARTIFACT:apps/web/src/lib/session.ts;ARTIFACT:apps/api/src/middleware/auth.ts;ARTIFACT:apps/project-tracker/docs/metrics/_global/flows/FLOW-001.md;EVIDENCE:.specify/sprints/sprint-3/attestations/IFC-006/attestation.json,VALIDATE:pnpm test,90/180/360,2026-01-25,2026-01-30,100,IFC-003:FS,
IFC-007,Validation,PHASE-003: Performance Benchmarks - Modern Stack,Performance Eng + DevOps (STOA-Quality),"IFC-004,IFC-005",FILE:.specify/memory/Framework.md;FILE:audit-matrix.yml;ENV:k6/Vitest setup;POLICY:metrics defined;FILE:docs/architecture/adr/ADR-001-modern-stack.md;FILE:docs/development/tdd-guidelines.md;FILE:docs/shared/review-checklist.md;FILE:apps/web/src/app/leads/(list)/new/page.tsx;FILE:apps/ai-worker/src/chains/scoring.chain.ts,"Baseline with tRPC, Vercel Edge, Railway documented; targets: <100ms; verified by: pnpm test; gates: p99-latency-check",Completed,"1000 concurrent users, p99 <100ms",3,ARTIFACT:tools/scripts/k6/load-test.js;ARTIFACT:artifacts/benchmarks/performance-report.html;ARTIFACT:infra/monitoring/grafana-dashboard.json;ARTIFACT:artifacts/metrics/baseline-metrics.csv;ARTIFACT:apps/ai-worker/src/scripts/benchmark.ts;ARTIFACT:apps/project-tracker/docs/metrics/_global/flows/FLOW-003.md;ARTIFACT:apps/project-tracker/docs/metrics/_global/phase-validations/PHASE-003-validation.md;EVIDENCE:.specify/sprints/sprint-3/attestations/IFC-007/attestation.json,VALIDATE:pnpm test;GATE:p99-latency-check,90/180/360,2026-01-25,2026-02-01,100,"IFC-004:FS,IFC-005:FS",
IFC-008,Validation,PHASE-003: Security Assessment - OWASP + ISO 42001 Prep,Security Eng + CTO (STOA-Security),IFC-001,FILE:.specify/memory/Framework.md;FILE:audit-matrix.yml;POLICY:OWASP checklist;POLICY:ISO 42001 requirements mapped;FILE:docs/security/zero-trust-design.md;FILE:docs/security/owasp-checklist.md;FILE:docs/development/tdd-guidelines.md;FILE:docs/shared/review-checklist.md;FILE:docs/operations/pr-checklist.md;FILE:docs/architecture/adr/ADR-001-modern-stack.md,"Security review with AI governance considerations; artifacts: compliance-report.md, owasp-checklist.md, iso42001-gap-analysis.md; gates: security-scan-pass; 0 critical vulnerabilities, all controls verified",Completed,"0 critical vulnerabilities, AI compliance roadmap",2,ARTIFACT:docs/compliance-and-governance/compliance/compliance-report.md;ARTIFACT:docs/security/owasp-checklist.md;ARTIFACT:docs/planning/iso42001-gap-analysis.md;ARTIFACT:artifacts/reports/zap-scan-report.json;ARTIFACT:apps/project-tracker/docs/metrics/_global/flows/FLOW-003.md;ARTIFACT:apps/project-tracker/docs/metrics/_global/phase-validations/PHASE-003-validation.md;ARTIFACT:docs/architecture/architecture-spike-README.md;ARTIFACT:tools/scripts/benchmarks/performance-test.ts;ARTIFACT:tools/scripts/benchmarks/type-safety-validation.ts;EVIDENCE:.specify/sprints/sprint-2/attestations/IFC-008/attestation.json,GATE:security-scan-pass,120/240/480,2026-01-11,2026-01-18,100,IFC-001:FS,
IFC-009,Validation,"PHASE-002: Team Capability Assessment - Modern Stack (Next.js 16.0.10 App Router, Turbopack FS caching, Cache Components, proxy replacing middleware)",PM + Tech Lead (STOA-Foundation),"IFC-001,IFC-005",FILE:.specify/memory/Framework.md;FILE:audit-matrix.yml;ENV:Skills matrix for tRPC/Next.js/LangChain;FILE:docs/architecture/adr/ADR-001-modern-stack.md;FILE:docs/development/tdd-guidelines.md;FILE:docs/shared/review-checklist.md;FILE:docs/operations/quality-gates.md;FILE:docs/operations/pr-checklist.md;FILE:apps/ai-worker/src/chains/scoring.chain.ts,"Team readiness evaluated, training plan created; artifacts: team-skills-matrix.csv, training-plan.md, competency-test-results.csv; targets: >=80%",Completed,80% team confident with new stack,4,ARTIFACT:docs/training/team-skills-matrix.csv;ARTIFACT:docs/planning/training-plan.md;ARTIFACT:artifacts/reports/competency-test-results.csv;ARTIFACT:artifacts/reports/confidence-survey.md;ARTIFACT:apps/project-tracker/docs/metrics/_global/flows/FLOW-002.md;ARTIFACT:apps/project-tracker/docs/metrics/_global/phase-validations/PHASE-002-validation.md;EVIDENCE:.specify/sprints/sprint-4/attestations/IFC-009/attestation.json,VALIDATE:pnpm typecheck,60/120/240,2026-02-08,2026-02-12,100,"IFC-001:FS,IFC-005:FS",
IFC-010,Decision Gate,PHASE-001: Phase 1 Go/No-Go Decision,CEO + Leadership (STOA-Leadership),"IFC-001,IFC-002,IFC-003,IFC-004,IFC-005,IFC-006,IFC-007,IFC-008,IFC-009,IFC-089,IFC-098,IFC-112",FILE:.specify/memory/Framework.md;FILE:audit-matrix.yml;POLICY:All validation tasks complete;ENV:risks assessed;FILE:docs/operations/quality-gates.md;FILE:docs/architecture/decision-workflow.md;FILE:docs/architecture/adr/ADR-001-modern-stack.md;FILE:packages/db/prisma/schema.prisma;FILE:apps/api/src/trpc.ts;FILE:apps/web/src/app/leads/(list)/new/page.tsx;FILE:apps/ai-worker/src/chains/scoring.chain.ts;FILE:apps/api/src/lib/supabase.ts;FILE:tools/scripts/k6/load-test.js;FILE:docs/compliance-and-governance/compliance/compliance-report.md;FILE:docs/training/team-skills-matrix.csv;FILE:apps/api/src/modules/contact/contact.router.ts;FILE:packages/db/prisma/schema-audit.prisma;FILE:artifacts/metrics/blue-green-metrics.csv,"Decision made: proceed with modern stack or pivot; artifacts: decision-gate-1.md, risk-assessment.csv, go-decision-minutes.md",Completed,"Clear decision, modern stack validated",6,ARTIFACT:docs/planning/decision-gate-1.md;ARTIFACT:docs/compliance-and-governance/governance/risk-assessment.csv;ARTIFACT:docs/planning/gate-2/go-decision-minutes.md;ARTIFACT:docs/planning/financial/budget-approval.md;EVIDENCE:.specify/sprints/sprint-6/attestations/IFC-010/attestation.json,VALIDATE:pnpm lint,60/120/180,2026-03-08,2026-03-10,100,"IFC-001:FS,IFC-002:FS,IFC-003:FS,IFC-004:FS,IFC-005:FS,IFC-006:FS,IFC-007:FS,IFC-008:FS,IFC-009:FS,IFC-089:FS,IFC-098:FS,IFC-112:FS",
IFC-011,Parallel Track,PHASE-002: Supabase Free Tier Optimization,DevOps + PM (STOA-Automation),IFC-000,FILE:.specify/memory/Framework.md;FILE:audit-matrix.yml;ENV:Supabase account;ENV:usage limits understood;FILE:docs/architecture/adr/ADR-001-modern-stack.md;FILE:docs/planning/financial/business-case.md,"Free tier maximized, upgrade path documented",Completed,"All free features utilized, costs projected",3,ARTIFACT:docs/planning/financial/supabase-usage-report.json;ARTIFACT:docs/planning/financial/cost-projection.json;ARTIFACT:docs/shared/optimization-guide.md;ARTIFACT:infra/monitoring/upgrade-triggers.yaml;ARTIFACT:apps/project-tracker/docs/metrics/_global/flows/FLOW-002.md;ARTIFACT:apps/project-tracker/docs/metrics/_global/phase-validations/PHASE-002-validation.md;EVIDENCE:.specify/sprints/sprint-3/attestations/IFC-011/attestation.json,VALIDATE:pnpm typecheck,45/90/180,2026-01-25,2026-01-28,100,IFC-000:FS,
IFC-012,MVP Week 1,PHASE-002: Turborepo Monorepo Setup,Tech Lead + Backend Dev (STOA-Domain),IFC-010,FILE:.specify/memory/Framework.md;FILE:audit-matrix.yml;ENV:Node.js 20;ENV:pnpm installed;FILE:docs/architecture/adr/ADR-001-modern-stack.md;FILE:docs/architecture/repo-layout.md;FILE:docs/planning/decision-gate-1.md,"Monorepo with apps/, packages/, shared configs; targets: <3min; verified by: pnpm build",Completed,"Build caching working, <3min builds",6,ARTIFACT:turbo.json;ARTIFACT:.github/workflows/ci.yml;ARTIFACT:infra/monitoring/pnpm-workspace.yaml;EVIDENCE:.specify/sprints/sprint-6/attestations/IFC-012/attestation.json,VALIDATE:pnpm build,60/120/240,2026-03-08,2026-03-11,100,IFC-010:FS,
IFC-013,MVP Week 1,PHASE-002: tRPC Router Implementation,Backend Dev + Tech Lead (STOA-Domain),IFC-012,FILE:.specify/memory/Framework.md;FILE:audit-matrix.yml;ENV:Turborepo ready;ENV:TypeScript configured;FILE:docs/architecture/adr/ADR-001-modern-stack.md;FILE:docs/operations/engineering-playbook.md;FILE:turbo.json,"Lead CRUD with tRPC, Zod validation, type-safe client; artifacts: leads.router.ts, context_ack.json; targets: >=100%, <50ms",Completed,"100% type coverage, API response <50ms",6,ARTIFACT:apps/api/src/modules/lead/lead.router.ts;ARTIFACT:apps/project-tracker/docs/metrics/_global/flows/FLOW-002.md;ARTIFACT:apps/project-tracker/docs/metrics/_global/phase-validations/PHASE-002-validation.md;EVIDENCE:.specify/sprints/sprint-6/attestations/IFC-013/attestation.json,VALIDATE:pnpm --filter @intelliflow/api typecheck;VALIDATE:pnpm --filter @intelliflow/api test --run,90/180/360,2026-03-11,2026-03-15,100,IFC-012:FS,
IFC-014,MVP Week 1,PHASE-002: Next.js 16.0.10 App Router UI,Frontend Dev + UX (STOA-Domain),IFC-013,FILE:docs/design/page-registry.md;FILE:.specify/memory/Framework.md;FILE:audit-matrix.yml;ENV:shadcn/ui setup;ENV:Tailwind configured;FILE:docs/architecture/adr/ADR-001-modern-stack.md;FILE:docs/company/brand/visual-identity.md;FILE:docs/company/brand/style-guide.md;FILE:docs/company/brand/dos-and-donts.md;FILE:docs/company/brand/accessibility-patterns.md;FILE:apps/api/src/modules/lead/lead.router.ts,"Lead management UI with RSC, optimistic updates; Next.js 16.0.10 App Router uses Turbopack FS caching and Cache Components; proxy replaces middleware where required; targets: >=100%",Completed,"Core Web Vitals green, accessibility 100%",6,ARTIFACT:artifacts/benchmarks/web-vitals-report.json;ARTIFACT:artifacts/reports/axe-audit-results.json;ARTIFACT:apps/project-tracker/docs/metrics/_global/flows/FLOW-002.md;ARTIFACT:apps/project-tracker/docs/metrics/_global/phase-validations/PHASE-002-validation.md;EVIDENCE:.specify/sprints/sprint-6/attestations/IFC-014/attestation.json,VALIDATE:pnpm --filter @intelliflow/web typecheck;VALIDATE:pnpm --filter @intelliflow/web test --run,90/180/360,2026-03-22,2026-03-27,100,IFC-013:FS,
IFC-015,MVP Week 1,PHASE-002: BullMQ Job Queue Setup,Backend Dev + DevOps (STOA-Automation),IFC-013,FILE:.specify/memory/Framework.md;FILE:audit-matrix.yml;ENV:Redis configured;ENV:BullMQ installed;FILE:apps/api/src/modules/lead/lead.router.ts,"Async job processing for AI scoring, retry logic; artifacts: bull-board-screenshot.png, job-metrics.json, context_ack.json; verified by: pnpm test",Completed,"Jobs processing reliably, dashboard active",6,ARTIFACT:artifacts/metrics/job-metrics.json;ARTIFACT:packages/platform/src/**;ARTIFACT:packages/platform/src/queues/retry-strategy.ts;EVIDENCE:.specify/sprints/sprint-6/attestations/IFC-015/attestation.json,VALIDATE:pnpm test,90/180/360,2026-03-22,2026-03-28,100,IFC-013:FS,
IFC-016,MVP Week 1,PHASE-002: Real-time Subscriptions,Frontend Dev + Backend Dev (STOA-Domain),IFC-014,FILE:.specify/memory/Framework.md;FILE:audit-matrix.yml;ENV:tRPC subscriptions;ENV:Supabase realtime;FILE:artifacts/benchmarks/web-vitals-report.json,"Live updates for lead scores and activities; P95 latency 60ms; 27 tests passing; artifacts: use-subscription.ts, websocket-test-results.json; verified by: pnpm test; gates: latency-check PASSED",Completed,"<100ms latency (60ms actual), connection stable",6,ARTIFACT:apps/web/src/hooks/use-trpc-subscriptions.ts;ARTIFACT:apps/web/src/hooks/__tests__/use-trpc-subscriptions.test.ts;ARTIFACT:artifacts/reports/websocket-test-results.json;EVIDENCE:.specify/sprints/sprint-6/attestations/IFC-016/attestation.json,VALIDATE:pnpm test;GATE:latency-check,60/120/240,2026-03-27,2026-03-30,100,IFC-014:FS,
IFC-017,MVP Week 1,PHASE-002: Prisma + Supabase Data Layer,Backend Dev + DA (STOA-Domain),"IFC-012,IFC-013",FILE:.specify/memory/Framework.md;FILE:audit-matrix.yml;POLICY:Prisma schema defined;ENV:migrations ready;FILE:docs/architecture/adr/ADR-001-modern-stack.md;FILE:docs/architecture/adr/ADR-007-data-governance.md;FILE:packages/db/prisma/schema.prisma;FILE:docs/shared/review-checklist.md;FILE:docs/operations/pr-checklist.md;FILE:turbo.json;FILE:apps/api/src/modules/lead/lead.router.ts,"Type-safe database queries, pgvector configured; targets: <20ms, zero errors",Completed,"Zero data loss, queries <20ms",6,ARTIFACT:packages/db/src/client.ts;ARTIFACT:tools/scripts/pgvector-test.sql;ARTIFACT:apps/project-tracker/docs/metrics/_global/flows/FLOW-002.md;ARTIFACT:apps/project-tracker/docs/metrics/_global/phase-validations/PHASE-002-validation.md;EVIDENCE:.specify/sprints/sprint-6/attestations/IFC-017/attestation.json,VALIDATE:pnpm --filter @intelliflow/api typecheck;VALIDATE:pnpm --filter @intelliflow/api test --run,90/180/360,2026-03-11,2026-03-17,100,"IFC-012:FS,IFC-013:FS",
IFC-018,MVP Week 1,PHASE-002: Vitest Testing Suite,QA + Whole Team (STOA-Quality),"IFC-014,IFC-015,IFC-016",FILE:.specify/memory/Framework.md;FILE:audit-matrix.yml;ENV:Vitest configured;ENV:coverage tools ready;FILE:docs/development/tdd-guidelines.md;FILE:docs/company/brand/visual-identity.md;FILE:artifacts/benchmarks/web-vitals-report.json;FILE:artifacts/misc/bull-board-screenshot.png;FILE:apps/web/src/hooks/use-trpc-subscriptions.ts,"157 test files, 4711 tests passing; coverage thresholds: 90% statements, 80% branches; gates: coverage-gte-80 PASSED, coverage-gte-90 PASSED",Completed,"All critical paths tested (4711 tests), CI green",6,ARTIFACT:vitest.config.ts;ARTIFACT:artifacts/test-results/test-report.html;ARTIFACT:artifacts/reports/ci-test-results.xml;EVIDENCE:.specify/sprints/sprint-6/attestations/IFC-018/attestation.json,VALIDATE:pnpm test;GATE:coverage-gte-80;GATE:coverage-gte-90,90/180/360,2026-03-30,2026-04-04,100,"IFC-014:FS,IFC-015:FS,IFC-016:FS",
IFC-019,Investment Gate,PHASE-001: Gate 1 Review - £500 Investment,CFO + CEO (STOA-Leadership),IFC-018,FILE:.specify/memory/Framework.md;FILE:audit-matrix.yml;ENV:Week 1 metrics collected;ENV:POC results analyzed;FILE:docs/shared/review-checklist.md;FILE:docs/operations/quality-gates.md;FILE:apps/api/vitest.config.ts,"Continue/pivot decision based on MVP success; artifacts: investment-gate-1-deck.md, week-1-metrics.csv, roi-projection.md, cfo-approval.md",Completed,"ROI projection validated, budget approved",6,SPEC:.specify/sprints/sprint-6/specifications/IFC-019-spec.md;PLAN:.specify/sprints/sprint-6/planning/IFC-019-plan.md;ARTIFACT:docs/planning/investment-gate-1-deck.md;ARTIFACT:docs/planning/financial/roi-projection.md;ARTIFACT:docs/planning/cfo-approval.md;EVIDENCE:.specify/sprints/sprint-6/attestations/IFC-019/attestation.json,VALIDATE:pnpm lint,60/120/180,2026-04-05,2026-04-07,100,IFC-018:FS,
IFC-020,Intelligence,PHASE-011: LangChain Pipeline Design,AI Specialist + Data Scientist (STOA-Intelligence),IFC-019,FILE:.specify/memory/Framework.md;FILE:audit-matrix.yml;ENV:LangChain patterns researched;ENV:prompts tested;FILE:docs/operations/quality-gates.md;FILE:docs/design/token-mapping.md;FILE:docs/company/brand/visual-identity.md;FILE:docs/planning/investment-gate-1-deck.md,"Modular AI pipeline with memory (Zep), tools defined; artifacts: ai-architecture.md, langchain-flow-diagram.mermaid, context_ack.json; RetrievalService must return actual pgvector search results, not null fallback to FTS",Completed,"Pipeline architecture documented, extensible",6,ARTIFACT:docs/architecture/ai-architecture.md;ARTIFACT:docs/architecture/diagrams/langchain-flow-diagram.mermaid;EVIDENCE:.specify/sprints/sprint-6/attestations/IFC-020/attestation.json,GATE:no-null-fallback;VALIDATE:pnpm typecheck,120/240/480,2026-05-31,2026-06-06,100,IFC-019:FS,
IFC-021,Intelligence,PHASE-011: CrewAI Agent Framework,Backend Dev + AI Specialist (STOA-Intelligence),IFC-020,FILE:.specify/memory/Framework.md;FILE:audit-matrix.yml;ENV:CrewAI setup;POLICY:agent roles defined;FILE:docs/architecture/adr/ADR-006-agent-tools.md;FILE:docs/architecture/ai-architecture.md,"Lead qualifier, email writer, follow-up agents; artifacts: crew-config.yaml, agent-interaction-logs.json, orchestration.test.ts; verified by: pnpm test",Completed,"Agents cooperating, tasks orchestrated",6,ARTIFACT:infra/monitoring/crew-config.yaml;ARTIFACT:apps/api/src/agent/orchestration.test.ts;EVIDENCE:.specify/sprints/sprint-6/attestations/IFC-021/attestation.json,VALIDATE:pnpm test,90/180/360,2026-06-14,2026-06-20,100,IFC-020:FS,
IFC-022,Intelligence,PHASE-011: Structured AI Output Implementation,AI Specialist + Backend Dev (STOA-Intelligence),IFC-021,FILE:.specify/memory/Framework.md;FILE:audit-matrix.yml;ENV:Zod schemas for AI outputs;ENV:validation ready;FILE:docs/architecture/repo-layout.md;FILE:docs/operations/engineering-playbook.md;FILE:infra/monitoring/crew-config.yaml,"AI responses validated, confidence scores included; artifacts: output-validation.test.ts, confidence-calibration.json, context_ack.json; targets: >=100%",Completed,"100% structured outputs, type-safe",6,ARTIFACT:apps/api/src/shared/output-validation.test.ts;ARTIFACT:artifacts/reports/confidence-calibration.json;EVIDENCE:.specify/sprints/sprint-13/attestations/IFC-022/context_ack.json,VALIDATE:pnpm --filter @intelliflow/api typecheck;VALIDATE:pnpm --filter @intelliflow/api test --run,60/120/240,2026-06-17,2026-06-21,100,IFC-021:FS,
IFC-023,Intelligence,PHASE-011: AI Explainability UI,Frontend Dev + UX (STOA-Domain),IFC-022,FILE:.specify/memory/Framework.md;FILE:audit-matrix.yml;POLICY:Scoring factors defined;ENV:UI patterns researched;FILE:docs/company/brand/visual-identity.md;FILE:apps/api/src/shared/output-validation.test.ts,"Score explanations visible, factors breakdown shown; artifacts: user-test-results.pdf, context_ack.json",Completed,"Users understand AI decisions, trust >4/5",6,ARTIFACT:packages/ui/src/components/score/ScoreCard.tsx;ARTIFACT:packages/ui/src/components/score/ScoreFactorList.tsx;ARTIFACT:packages/ui/src/components/score/ScoreFactor.tsx;ARTIFACT:packages/ui/src/components/score/ConfidenceIndicator.tsx;ARTIFACT:packages/ui/src/components/score/ModelInfo.tsx;ARTIFACT:packages/ui/src/components/score/ScoreBadge.tsx;ARTIFACT:packages/ui/__tests__/score-card.test.tsx;EVIDENCE:.specify/sprints/sprint-13/attestations/IFC-023/context_ack.json,VALIDATE:pnpm --filter @intelliflow/web typecheck;VALIDATE:pnpm --filter @intelliflow/web test --run,90/180/360,2026-06-20,2026-06-25,100,IFC-022:FS,
IFC-024,Intelligence,PHASE-011: Human-in-the-Loop Feedback,Full Stack Dev (STOA-Foundation),IFC-023,FILE:.specify/memory/Framework.md;FILE:audit-matrix.yml;ENV:Feedback UI designed;ENV:learning pipeline ready;FILE:artifacts/reports/user-test-results.md,"Score adjustments tracked, model improvement loop; artifacts: feedback-analytics.json, context_ack.json",Completed,"All feedback captured, model updating",14,ARTIFACT:artifacts/reports/feedback-analytics.json;EVIDENCE:.specify/sprints/sprint-14/attestations/IFC-024/attestation.json,VALIDATE:pnpm typecheck,60/120/240,2026-06-28,2026-07-02,100,IFC-023:FS,
IFC-025,Intelligence,PHASE-011: A/B Testing Framework,Data Scientist + Backend Dev (STOA-Intelligence),IFC-022,FILE:.specify/memory/Framework.md;FILE:audit-matrix.yml;ENV:Feature flags setup;POLICY:metrics defined;FILE:docs/development/tdd-guidelines.md;FILE:apps/api/src/shared/output-validation.test.ts,"AI vs manual scoring comparison, statistical analysis; artifacts: ab-test-config.json, statistical-analysis.ipynb, experiment-dashboard.png",Completed,"Experiments trackable, significance calculable",6,ARTIFACT:packages/validators/src/experiment.ts;ARTIFACT:apps/ai-worker/src/analytics/statistical-analysis.ts;ARTIFACT:packages/application/src/services/ExperimentService.ts;ARTIFACT:apps/api/src/modules/experiment/experiment.router.ts;ARTIFACT:packages/ui/src/components/experiment/ExperimentDashboard.tsx;ARTIFACT:infra/monitoring/ab-test-config.json;EVIDENCE:.specify/sprints/sprint-6/attestations/IFC-025/attestation.json,VALIDATE:pnpm --filter @intelliflow/api typecheck;VALIDATE:pnpm --filter @intelliflow/api test --run,120/240/480,2026-06-28,2026-07-05,100,IFC-022:FS,
IFC-026,Intelligence,PHASE-011: Playwright E2E Testing,QA + AI Specialist (STOA-Quality),"IFC-022,IFC-024",FILE:.specify/memory/Framework.md;FILE:audit-matrix.yml;ENV:Playwright setup;POLICY:test scenarios defined;FILE:docs/development/tdd-guidelines.md;FILE:apps/api/src/shared/output-validation.test.ts;FILE:artifacts/reports/feedback-analytics.json,"E2E tests for AI features, visual regression; artifacts: index.html, context_ack.json",Completed,"Critical flows covered, screenshots validated",15,ARTIFACT:artifacts/test-results/playwright-report.html;EVIDENCE:.specify/sprints/sprint-15/attestations/IFC-026/attestation.json,VALIDATE:pnpm --filter @intelliflow/web typecheck,90/180/360,2026-07-12,2026-07-18,100,"IFC-022:FS,IFC-024:FS",
IFC-027,Investment Gate,PHASE-001: Gate 2 Review - £2000 Investment,CFO + CEO (STOA-Leadership),IFC-026,FILE:.specify/memory/Framework.md;FILE:audit-matrix.yml;ENV:AI value demonstrated;ENV:metrics collected;FILE:docs/shared/review-checklist.md;FILE:docs/operations/quality-gates.md;FILE:artifacts/test-results/playwright-report.html,"Expand/maintain decision on AI features; artifacts: investment-gate-2-analysis.md, ai-roi-report.md, customer-feedback.md",Completed,"AI adds measurable value, ROI positive",15,ARTIFACT:docs/planning/gate-2/investment-gate-2-analysis.md;ARTIFACT:docs/planning/customer-feedback.md;ARTIFACT:docs/planning/board-presentation.md;EVIDENCE:.specify/sprints/sprint-15/attestations/IFC-027/attestation.json,VALIDATE:pnpm lint,60/120/180,2026-07-19,2026-07-23,100,IFC-026:FS,
IFC-028,Automation,PHASE-005: Workflow Engine with LangGraph,Backend Dev + Architect (STOA-Domain),IFC-027,FILE:.specify/memory/Framework.md;FILE:audit-matrix.yml;POLICY:LangGraph evaluated;ENV:state machines designed;FILE:docs/architecture/adr/ADR-005-workflow-engine.md;FILE:docs/planning/gate-2/investment-gate-2-analysis.md,"Visual workflow engine with conditional logic; artifacts: state-machine-tests.ts, IFC-028-delivery.md, context_ack.json",Completed,"Complex workflows supported, state persistent",16,ARTIFACT:apps/api/src/workflow/__tests__/state-machine.test.ts;ARTIFACT:.specify/sprints/sprint-16/execution/IFC-028/IFC-028-delivery.md;EVIDENCE:.specify/sprints/sprint-16/attestations/IFC-028/attestation.json,VALIDATE:pnpm --filter @intelliflow/api typecheck;VALIDATE:pnpm --filter @intelliflow/api test --run,120/240/480,2026-07-26,2026-08-02,100,IFC-027:FS,
IFC-029,Automation,PHASE-005: Auto-Response with Approval Gate,Backend Dev + AI Specialist (STOA-Intelligence),IFC-028,FILE:.specify/memory/Framework.md;FILE:audit-matrix.yml;ENV:Response templates created;ENV:approval UI ready;FILE:docs/shared/review-checklist.md;FILE:docs/operations/quality-gates.md;FILE:docs/operations/pr-checklist.md;FILE:apps/api/src/workflow/__tests__/state-machine.test.ts,"AI-generated responses with human approval workflow; artifacts: approval-workflow.bpmn, response-quality-metrics.json, context_ack.json; targets: <1s; All phases completed: Domain(1)+AI Chain(4)+Infrastructure(2)+Application(3)+Integration(5)",Completed,"Response generation <1s, approval tracking",16,ARTIFACT:docs/architecture/approval-workflow.bpmn;ARTIFACT:artifacts/metrics/response-quality-metrics.json;ARTIFACT:apps/project-tracker/docs/metrics/sprint-16/IFC-029-attestation.json;EVIDENCE:.specify/sprints/sprint-16/attestations/IFC-029/attestation.json;SPEC:.specify/sprints/sprint-16/specifications/IFC-029-spec.md;PLAN:.specify/sprints/sprint-16/planning/IFC-029-plan.md;ARTIFACT:docs/architecture/adr/ADR-017-workflow-reliability.md,GATE:real-llm-generation;VALIDATE:pnpm test,90/180/360,2026-01-31,2026-08-05,100,IFC-028:FS,
IFC-030,Automation,PHASE-005: Smart Lead Routing,Backend Dev + Sales Ops (STOA-Domain),IFC-029,FILE:.specify/memory/Framework.md;FILE:audit-matrix.yml;POLICY:Routing rules defined;ENV:assignment logic clear;FILE:docs/architecture/approval-workflow.bpmn,"Score-based routing with load balancing; artifacts: routing-rules-config.yaml, routing-simulation-results.csv, sla-compliance.pdf; targets: >=100%; routing-simulation-results.csv must contain real lead routing data from test database, not generated fake data",Completed,"100% leads routed optimally, SLA defined",17,ARTIFACT:infra/monitoring/routing-rules-config.yaml;ARTIFACT:artifacts/reports/routing-simulation-results.csv;ARTIFACT:docs/compliance-and-governance/governance/sla-compliance.md;EVIDENCE:.specify/sprints/sprint-17/attestations/IFC-030/attestation.json;ARTIFACT:docs/architecture/adr/ADR-017-workflow-reliability.md;SPEC:.specify/sprints/sprint-17/specifications/IFC-030-spec.md;PLAN:.specify/sprints/sprint-17/planning/IFC-030-plan.md,GATE:real-routing-data;VALIDATE:pnpm test:integration,90/180/360,2026-08-09,2026-08-15,100,IFC-029:FS,
IFC-031,Automation,PHASE-005: Workflow Builder UI (React Flow),Frontend Dev + UX (STOA-Domain),IFC-028,FILE:.specify/memory/Framework.md;FILE:audit-matrix.yml;ENV:React Flow integrated;ENV:drag-drop ready;FILE:docs/architecture/adr/ADR-005-workflow-engine.md;FILE:docs/company/brand/visual-identity.md;FILE:apps/api/src/workflow/__tests__/state-machine.test.ts,"Visual workflow creation, node-based editor; artifacts: usability-test-video.mp4, context_ack.json; verified by: pnpm build",Completed,Non-technical users building workflows,17,EVIDENCE:.specify/sprints/sprint-17/attestations/IFC-031/attestation.json;SPEC:.specify/sprints/sprint-17/specifications/IFC-031-spec.md;PLAN:.specify/sprints/sprint-17/planning/IFC-031-plan.md,VALIDATE:pnpm build,120/240/480,2026-04-12,2026-08-30,100,IFC-028:FS,
IFC-032,Automation,PHASE-005: OpenTelemetry Monitoring,DevOps + SRE (STOA-Automation),IFC-030,FILE:.specify/memory/Framework.md;FILE:audit-matrix.yml;ENV:OTel setup;ENV:Grafana configured;FILE:infra/monitoring/routing-rules-config.yaml,"Distributed tracing, metrics, logs unified; artifacts: otel-collector-config.yaml, trace-examples.json, context_ack.json; trace-examples.json must contain real trace IDs from actual service calls, not fabricated examples",In Progress,"Full observability, alerts configured",18,ARTIFACT:artifacts/misc/otel-collector-config.yaml;ARTIFACT:artifacts/misc/trace-examples.json;EVIDENCE:.specify/sprints/sprint-18/attestations/IFC-032/context_ack.json;ARTIFACT:docs/architecture/adr/ADR-017-workflow-reliability.md,GATE:real-trace-data;GATE:integration-wired;VALIDATE:pnpm typecheck,90/180/360,2026-08-23,2026-08-29,50,IFC-030:FS,
IFC-033,Automation,PHASE-005: Load Testing with k6,Performance Eng + DevOps (STOA-Quality),"IFC-030,IFC-032",FILE:.specify/memory/Framework.md;FILE:audit-matrix.yml;ENV:k6 scripts written;POLICY:load scenarios defined;FILE:docs/development/tdd-guidelines.md;FILE:infra/monitoring/routing-rules-config.yaml;FILE:artifacts/misc/otel-collector-config.yaml,"System handles 5000 leads/hour with automation; artifacts: load-test-report.html, bottleneck-analysis.md, grafana-load-test.png; load-test-report.html must show actual k6 execution output with real timestamps, not template report",Completed,"Performance validated, bottlenecks identified",19,ARTIFACT:artifacts/reports/load-test-report.html;ARTIFACT:docs/shared/bottleneck-analysis.md;ARTIFACT:artifacts/misc/grafana-load-test.png;EVIDENCE:.specify/sprints/sprint-19/attestations/IFC-033/context_ack.json;ARTIFACT:docs/architecture/adr/ADR-017-workflow-reliability.md,GATE:real-benchmark-data;VALIDATE:pnpm test:load,120/240/480,2026-09-06,2026-09-13,100,"IFC-030:FS,IFC-032:FS",
IFC-034,Investment Gate,PHASE-001: Gate 3 Review - £3000 Investment,CFO + CEO (STOA-Leadership),IFC-033,FILE:.specify/memory/Framework.md;FILE:audit-matrix.yml;ENV:Automation ROI calculated;ENV:stability proven;FILE:docs/shared/review-checklist.md;FILE:docs/operations/quality-gates.md;FILE:artifacts/reports/load-test-report.html,"Scale decision with modern stack validated; artifacts: automation-roi-analysis.xlsx, stability-report.pdf, scale-plan.pptx",Backlog,"Clear path forward, investment justified",19,ARTIFACT:artifacts/reports/automation-roi-analysis.xlsx;ARTIFACT:artifacts/reports/stability-report.pdf;ARTIFACT:artifacts/misc/scale-plan.pptx;ARTIFACT:artifacts/misc/investment-recommendation.docx;EVIDENCE:.specify/sprints/sprint-19/attestations/IFC-034/context_ack.json,VALIDATE:pnpm lint,60/120/180,2026-09-14,2026-09-17,0,IFC-033:FS,
IFC-035,Enhancement,PHASE-006: WhatsApp Business API Research,Integration Eng + PM (STOA-Foundation),IFC-034,FILE:.specify/memory/Framework.md;FILE:audit-matrix.yml;ENV:WhatsApp API access requested;ENV:costs analyzed;FILE:artifacts/reports/automation-roi-analysis.xlsx,"Integration approach with Supabase webhooks validated; artifacts: whatsapp-api-research.md, integration-design.puml, cost-analysis.xlsx",Backlog,"Technical feasibility confirmed, costs clear",20,ARTIFACT:docs/shared/whatsapp-api-research.md;ARTIFACT:docs/shared/integration-design.puml;ARTIFACT:artifacts/reports/cost-analysis.xlsx;ARTIFACT:artifacts/misc/poc-results.json;EVIDENCE:.specify/sprints/sprint-20/attestations/IFC-035/context_ack.json,VALIDATE:pnpm typecheck,60/120/240,2026-09-20,2026-09-25,0,IFC-034:FS,
IFC-036,Enhancement,PHASE-006: WhatsApp + tRPC Integration,Backend Dev + Integration Eng (STOA-Domain),"IFC-035,IFC-106",FILE:.specify/memory/Framework.md;FILE:audit-matrix.yml;ENV:API credentials obtained;ENV:webhook endpoint ready;FILE:docs/architecture/adr/ADR-001-modern-stack.md;FILE:docs/shared/whatsapp-api-research.md;FILE:docs/architecture/hex-boundaries.md,"WhatsApp messages captured via tRPC mutations; artifacts: webhook-test-results.json, message-flow-diagram.svg, context_ack.json; targets: >=9%, <1s; verified by: pnpm test; gates: latency-check; webhook-test-results.json must contain real WhatsApp API responses, adapter must be wired to API router",Backlog,"Messages processed <1s, 99.9% reliability",21,ARTIFACT:artifacts/misc/webhook-test-results.json;ARTIFACT:docs/shared/message-flow-diagram.svg;EVIDENCE:.specify/sprints/sprint-21/attestations/IFC-036/context_ack.json,VALIDATE:pnpm test;GATE:latency-check;GATE:integration-wired;GATE:provider-test-exists,120/240/480,2026-10-04,2026-10-11,0,"IFC-035:FS,IFC-106:FS",
IFC-037,Enhancement,PHASE-005: Analytics Dashboard Design,Data Analyst + UX (STOA-Foundation),"IFC-032,ANALYTICS-001,IFC-190",FILE:.specify/memory/Framework.md;FILE:audit-matrix.yml;POLICY:KPIs defined;POLICY:Tremor UI evaluated;FILE:docs/design/token-mapping.md;FILE:docs/company/brand/visual-identity.md;FILE:artifacts/misc/otel-collector-config.yaml;FILE:docs/analytics/rfm-abc-spec.md;FILE:apps/api/src/modules/analytics/analytics.router.ts,"Real-time analytics with shadcn/ui charts; artifacts: figma-dashboard-designs.url, kpi-definitions.yaml, user-feedback-notes.md",Backlog,All stakeholders approve mockups,21,ARTIFACT:artifacts/misc/figma-dashboard-designs.url;ARTIFACT:artifacts/misc/kpi-definitions.yaml;ARTIFACT:docs/dashboard/user-feedback-notes.md;ARTIFACT:artifacts/misc/design-tokens.json;EVIDENCE:.specify/sprints/sprint-21/attestations/IFC-037/context_ack.json;ARTIFACT:docs/architecture/adr/ADR-016-analytics-integrity.md;ARTIFACT:docs/planning/prd-analytics-reporting.md,VALIDATE:pnpm typecheck,60/120/240,2026-10-04,2026-10-08,0,"IFC-032:FS,ANALYTICS-001:FS,IFC-190:FS",
IFC-038,Enhancement,Analytics Implementation,Frontend Dev + Data Eng (STOA-Domain),"IFC-037,ANALYTICS-001,IFC-190",FILE:.specify/memory/Framework.md;FILE:audit-matrix.yml;ENV:Chart components ready;ENV:data pipeline designed;FILE:docs/operations/engineering-playbook.md;FILE:artifacts/misc/figma-dashboard-designs.url;FILE:docs/analytics/rfm-abc-spec.md;FILE:apps/api/src/modules/analytics/analytics.router.ts,"Interactive dashboard with Supabase real-time; artifacts: real-time-test-video.mp4, context_ack.json; targets: <1s; Dashboard must display real database data, not hardcoded chart values",Backlog,"Real-time updates <1s, insights actionable",22,ARTIFACT:artifacts/misc/real-time-test-video.mp4;EVIDENCE:.specify/sprints/sprint-22/attestations/IFC-038/context_ack.json;ARTIFACT:docs/architecture/adr/ADR-016-analytics-integrity.md;ARTIFACT:docs/planning/prd-analytics-reporting.md,GATE:real-data-check;VALIDATE:pnpm test,120/240/480,2026-10-18,2026-10-25,0,"IFC-037:FS,ANALYTICS-001:FS,IFC-190:FS",
IFC-039,Enhancement,Advanced AI Features (RAG),AI Specialist + Full Team (STOA-Intelligence),IFC-025,FILE:.specify/memory/Framework.md;FILE:audit-matrix.yml;ENV:Supabase pgvector ready;ENV:embeddings tested;FILE:infra/monitoring/ab-test-config.json,"RAG for context, sentiment analysis, next best action; artifacts: embeddings-quality-test.json, sentiment-accuracy.csv, nba-demo.md",Completed,AI features demonstrating clear value,6,PLAN:.specify/sprints/sprint-6/planning/IFC-039-plan.md;CONTEXT:.specify/sprints/sprint-6/context/IFC-039/hydrated-context.md;SPEC:.specify/sprints/sprint-6/specifications/IFC-039-spec.md;ARTIFACT:artifacts/reports/embeddings-quality-test.json;ARTIFACT:artifacts/metrics/sentiment-accuracy.csv;ARTIFACT:docs/planning/nba-demo.md;EVIDENCE:.specify/sprints/sprint-6/attestations/IFC-039/attestation.json;ARTIFACT:docs/architecture/adr/ADR-022-ai-features-quality.md;ARTIFACT:docs/planning/prd-ai-output-quality.md,VALIDATE:pnpm typecheck,180/360/720,2026-11-01,2026-11-10,100,IFC-025:FS,
IFC-040,Enhancement,Production hardening incl. HttpOnly auth sessions and release security gates,DevOps + Security (STOA-Security),"IFC-046,IFC-111,IFC-112,IFC-113,IFC-115,IFC-122,IFC-127,IFC-043,IFC-033,IFC-130,IFC-132,IFC-133,IFC-134,IFC-169",FILE:.specify/memory/Framework.md;FILE:audit-matrix.yml;POLICY:Security review complete;ENV:performance optimized;FILE:docs/shared/review-checklist.md;FILE:docs/operations/pr-checklist.md;FILE:.github/workflows/security.yml;FILE:infra/monitoring/sonar-project.properties;FILE:artifacts/metrics/blue-green-metrics.csv;FILE:artifacts/misc/vault-config.yml;FILE:artifacts/misc/backup-scripts.sh;FILE:packages/platform/src/resilience/circuit-breaker.ts;FILE:infra/supabase/migrations/20250124000000_rls_policies.sql;FILE:docs/operations/incident-response-flowchart.svg;FILE:artifacts/reports/load-test-report.html;FILE:docs/release/promotion-policy.md;FILE:.github/workflows/security-sbom.yml;FILE:docs/security/signing.md;FILE:docs/security/image-scanning.md;FILE:docs/architecture/adr/ADR-020-public-site-auth.md;FILE:docs/planning/prd-public-site-auth.md;FILE:apps/web/src/lib/auth/AuthContext.tsx;FILE:apps/web/src/lib/shared/session-cleanup.ts;FILE:apps/web/src/lib/session.ts;FILE:apps/web/proxy.ts,"Railway production config, Vercel optimized, monitoring active, and browser auth migrated from localStorage/JS-readable bearer cookies to HttpOnly secure cookies or a server-managed Supabase session; artifacts: production-checklist.md, security-scan-final.pdf, AuthContext.tsx, session-cleanup.ts, session.ts, proxy.ts; targets: 99.9% uptime, zero JS-readable bearer tokens in production, zero critical vulnerabilities; verified by: pnpm typecheck, pnpm test, pnpm lint, pnpm build, security review",Backlog,"99.9% uptime achievable, zero JS-readable bearer tokens in production, zero critical vulnerabilities",25,ARTIFACT:docs/shared/production-checklist.md;ARTIFACT:artifacts/reports/security-scan-final.pdf;ARTIFACT:artifacts/benchmarks/performance-baseline.json;ARTIFACT:docs/shared/monitoring-runbook.md;ARTIFACT:apps/web/src/lib/auth/AuthContext.tsx;ARTIFACT:apps/web/src/lib/shared/session-cleanup.ts;ARTIFACT:apps/web/src/lib/session.ts;ARTIFACT:apps/web/proxy.ts;EVIDENCE:.specify/sprints/sprint-25/attestations/IFC-040/context_ack.json;ARTIFACT:docs/architecture/adr/ADR-015-security-validation.md;ARTIFACT:docs/architecture/adr/ADR-020-public-site-auth.md,VALIDATE:pnpm typecheck;VALIDATE:pnpm test;VALIDATE:pnpm lint;VALIDATE:pnpm build;AUDIT:security-review;GATE:no-js-readable-bearer-token,180/360/720,2026-11-29,2026-12-08,0,"IFC-046:FS,IFC-111:FS,IFC-112:FS,IFC-113:FS,IFC-115:FS,IFC-122:FS,IFC-127:FS,IFC-043:FS,IFC-033:FS,IFC-130:FS,IFC-132:FS,IFC-133:FS,IFC-134:FS,IFC-169:FS",
IFC-041,Documentation,User Manual with Interactive Examples,Tech Writer + PM (STOA-Foundation),"IFC-018,IFC-026,IFC-033",FILE:.specify/memory/Framework.md;FILE:audit-matrix.yml;POLICY:All features complete;ENV:screenshots ready;FILE:apps/api/vitest.config.ts;FILE:artifacts/test-results/playwright-report.html;FILE:artifacts/reports/load-test-report.html,Comprehensive guide with CodeSandbox examples; targets: >=100%; gates: coverage-gte-90,Backlog,"100% features documented, interactive demos",22,ARTIFACT:artifacts/misc/codesandbox-examples.json;ARTIFACT:artifacts/coverage/feature-coverage-matrix.xlsx;EVIDENCE:.specify/sprints/sprint-22/attestations/IFC-041/context_ack.json,GATE:coverage-gte-90,90/180/360,2026-10-18,2026-10-24,0,"IFC-018:FS,IFC-026:FS,IFC-033:FS",
IFC-042,Documentation,tRPC API Client SDK Docs,Backend Dev + Tech Writer (STOA-Domain),IFC-013,FILE:.specify/memory/Framework.md;FILE:audit-matrix.yml;ENV:tRPC client generated;ENV:types exported;FILE:docs/architecture/adr/ADR-001-modern-stack.md;FILE:apps/api/src/modules/lead/lead.router.ts,"NPM package docs, TypeScript examples; artifacts: README.md, npm-publish-log.txt, autocomplete-demo.gif",Completed,"SDK published, autocomplete working",12,ARTIFACT:packages/sdk/README.md;ARTIFACT:apps/project-tracker/docs/metrics/_global/flows/FLOW-002.md;ARTIFACT:apps/project-tracker/docs/metrics/_global/phase-validations/PHASE-002-validation.md;EVIDENCE:.specify/sprints/sprint-12/attestations/IFC-042/attestation.json,VALIDATE:pnpm --filter @intelliflow/api typecheck;VALIDATE:pnpm --filter @intelliflow/api test --run,60/120/240,2026-05-31,2026-06-04,100,IFC-013:FS,
